# ETSISOFT - 2324

Schedule from MS Project, 2023-11-20 to 2024-01-12, costs in €.

## Calendars

- ETSISOFT2324: Mon-Fri 09:00-13:00, 15:00-19:00; Sat-Sun off. Exceptions (off unless hours are given): 2023-12-06 (Día de la Inmaculada Concepción, recurring), 2023-12-08 (Día de la Constitución, recurring), 2023-12-25 (Navidad, recurring), 2024-01-01 (Año Nuevo, recurring), 2024-01-06 (Día de la Epifanía del Señor, recurring).

## Resources

| Resource | Group | Unit | Rate | Cost per use |
| --- | --- | --- | --- | --- |
| Soporte | Materiales | Soporte | 9.5 |  |
| Ordenador Servidor | Materiales | Instalación | 3600 | 150 |
| Windows 2022 Server | Materiales | Instalación | 850 |  |
| Switch 48 puertos 10/100/1000 MHz gestionable | Materiales | Instalación | 1250 |  |
| Patch Panel 48 puertos | Materiales | instalación | 220 |  |
| Armario 24 unidades | Materiales | Instalación | 850 |  |
| Juan Pérez | Analista, Supervisor |  | 29.15 |  |
| Javier Gutierrez | Jefe de Proyecto, Analista |  | 29.15 |  |
| Sara Carbonero | Analista, Supervisor |  | 29.15 |  |
| Vicente Ruiz | Analista, Programador |  | 29.15 |  |
| Francisco Delgado | Programador, Analista |  | 22.83 |  |
| Trabajador Soporte1 | Montador Soporte |  | 35 |  |
| Trabajador Soporte2 | Montador Soporte |  | 35 |  |
| Báscula |  |  | 38 |  |
| Torno |  |  | 1580 |  |
| Barreras/Pasillos |  |  |  |  |
| Dispositivos Biometricos |  |  | 1240 |  |

## Schedule

| ID | WBS | Task | Duration | Start | Finish | Predecessors | Total slack | Free slack | Constraint | Resources | Work | Cost |
| --- | --- | --- | --- | --- | --- | --- | --- | --- | --- | --- | --- | --- |
| 1 | 1 | **Instalación de elementos de control en puestos de líneas de producción** | 24d | 2023-11-20 | 2023-12-26 |  | 11.62d |  |  |  | 180h | 20,895.21 |
| 2 | 1.1 | Montaje de los soportes metálicos donde se apoyan las básculas | 54h | 2023-11-20 | 2023-11-28 |  | 11.62d | 0d |  | Trabajador Soporte1; Trabajador Soporte2; Soporte [240 Soporte] | 120h | 6,606 |
| 3 | 1.2 | **Habilitar punto de corriente** | 7d | 2023-11-29 | 2023-12-12 |  | 15.62d |  |  |  |  | 1,250 |
| 4 | 1.2.1 | Instalar cables | 4d | 2023-11-29 | 2023-12-05 | 2FS+1ed | 15.62d | 0d |  |  |  | 700 |
| 5 | 1.2.2 | Instalar puntos de Corriente | 2d | 2023-12-05 | 2023-12-11 | 4 | 15.62d | 0d |  |  |  | 350 |
| 6 | 1.2.3 | Pruebas | 1d | 2023-12-11 | 2023-12-12 | 5 | 15.62d | 4d |  |  |  | 200 |
| 7 | 1.3 | **Habilitar punto de red** | 11d | 2023-11-29 | 2023-12-18 |  | 11.62d |  |  |  |  | 1,920 |
| 8 | 1.3.1 | Instalar canaletas | 2d | 2023-11-29 | 2023-12-01 | 2FS+1ed | 11.62d | 0d |  |  |  | 220 |
| 9 | 1.3.2 | instalar cables | 4d | 2023-12-01 | 2023-12-11 | 8 | 11.62d | 0d |  |  |  | 650 |
| 10 | 1.3.3 | Instalar tomas de red en puestos | 2d | 2023-12-11 | 2023-12-13 | 9 | 11.62d | 0d |  |  |  | 400 |
| 11 | 1.3.4 | Montaje de Armario de comunicaciones, acabado en armario, realización de pruebas y certificación de la red | 3d | 2023-12-13 | 2023-12-18 | 10 | 11.62d | 0d |  |  |  | 650 |
| 12 | 1.4 | Montaje de la báscula | 42h | 2023-12-18 | 2023-12-26 | 6, 11 | 11.62d |  | start no earlier than 2023-12-18 | Javier Gutierrez; Juan Pérez; Báscula [24000%] | 60h | 11,119.21 |
| 13 | 2 | **Instalación de tornos de acceso** | 2.25d | 2023-12-18 | 2023-12-20 |  | 14.25d |  |  |  | 32h | 14,110.66 |
| 14 | 2.1 | **Montaje de los tornos y barreras** | 1.5d | 2023-12-18 | 2023-12-20 |  | 14.25d |  |  |  | 24h | 6,432.8 |
| 15 | 2.1.1 | Montaje de Tornos | 1d | 2023-12-18 | 2023-12-19 | 6, 11, 2 | 14.25d | 0d | start no earlier than 2023-12-13 | Trabajador Soporte1; Trabajador Soporte2; Torno [300%] | 16h | 5,300 |
| 16 | 2.1.2 | Montaje de Barreras | 0.5d | 2023-12-19 | 2023-12-20 | 15 | 15.37d |  |  | Trabajador Soporte1; Trabajador Soporte2 | 8h | 1,132.8 |
| 17 | 2.2 | Integración de dispositivos faciales | 1d | 2023-12-20 | 2023-12-20 | 15 | 14.62d |  |  | Sara Carbonero; Dispositivos Biometricos [600%] | 8h | 7,677.86 |
| 18 | 3 | **Instalación de infraestructura común de red yequipamiento informático** | 2d | 2023-12-21 | 2023-12-26 |  | 11.87d |  |  |  | 16h | 14,831.41 |
| 19 | 3.1 | Instalación Servidor | 2d | 2023-12-21 | 2023-12-26 | 6, 11 | 11.87d |  |  | Ordenador Servidor [1 Instalación]; Windows 2022 Server [1 Instalación]; Armario 24 unidades [1 Instalación]; Patch Panel 48 puertos [6 instalación]; Switch 48 puertos 10/100/1000 MHz gestionable [6 Instalación]; Javier Gutierrez | 16h | 14,831.41 |
| 20 | 4 | **Desarrollo de la aplicación informática** | 33.38d | 2023-11-20 | 2024-01-10 |  | 0d |  |  |  | 694h | 20,245.63 |
| 21 | 4.1 | **Análisis** | 12.5d | 2023-11-20 | 2023-12-07 |  | 1.75d |  |  |  | 318h | 9,311.08 |
| 22 | 4.1.1 | Definición del Sistema | 23.99h | 2023-11-20 | 2023-11-23 |  | 1.75d | 0d |  | Sara Carbonero; Juan Pérez; Francisco Delgado | 94h | 2,624.28 |
| 23 | 4.1.2 | Establecimiento de Requisitos | 21h | 2023-11-23 | 2023-11-27 | 22 | 4.88d | 2.38d | start no earlier than 2023-11-23 | Francisco Delgado; Juan Pérez | 42h | 1,091.58 |
| 24 | 4.1.3 | Análisis de Casos de Uso | 19h | 2023-11-27 | 2023-11-30 | 22 | 2.5d | 0d | start no earlier than 2023-11-27 | Francisco Delgado; Juan Pérez | 38h | 1,366.1 |
| 25 | 4.1.4 | Análisis de Clases | 24h | 2023-11-23 | 2023-11-28 | 22 | 4.5d | 2d |  | Sara Carbonero; Vicente Ruiz | 52h | 1,531.56 |
| 26 | 4.1.5 | Identificación de las Interfaces de Usuarios | 14h | 2023-11-28 | 2023-11-30 | 22 | 2.5d | 0d |  | Sara Carbonero; Vicente Ruiz | 28h | 816.2 |
| 27 | 4.1.6 | Análisis de la Consistencia | 16h | 2023-11-30 | 2023-12-04 | 23, 24, 25, 26 | 2.5d | 0.75d |  | Sara Carbonero; Juan Pérez | 36h | 1,065.16 |
| 28 | 4.1.7 | Aprobación del Análisis | 14h | 2023-12-05 | 2023-12-07 | 27 | 1.75d | 0d | start no earlier than 2023-12-05 | Sara Carbonero; Juan Pérez | 28h | 816.2 |

| ID | WBS | Task | Duration | Start | Finish | Predecessors | Total slack | Free slack | Constraint | Resources | Work | Cost |
| --- | --- | --- | --- | --- | --- | --- | --- | --- | --- | --- | --- | --- |
| 29 | 4.2 | **Diseño** | 7.25d | 2023-12-07 | 2023-12-19 |  | 1.75d |  |  |  | 176h | 5,153.62 |
| 30 | 4.2.1 | Definición de la Arquitectura del Sistema | 16h | 2023-12-07 | 2023-12-12 | 28 | 1.75d | 0d |  | Sara Carbonero; Juan Pérez | 32h | 932.8 |
| 31 | 4.2.2 | Diseño de Clases | 32h | 2023-12-12 | 2023-12-18 | 30 | 1.75d | 0d |  | Francisco Delgado; Sara Carbonero | 48h | 1,298.08 |
| 32 | 4.2.3 | Diseño de los Datos | 32h | 2023-12-12 | 2023-12-18 | 30 | 1.75d | 0d |  | Juan Pérez; Vicente Ruiz | 64h | 2,005.52 |
| 33 | 4.2.4 | Verificación del Diseño | 8h | 2023-12-18 | 2023-12-19 | 31, 32 | 1.75d | 0d | start no earlier than 2023-12-18 | Juan Pérez; Sara Carbonero; Vicente Ruiz; Francisco Delgado | 32h | 917.22 |
| 34 | 4.3 | **Construcción** | 10d | 2023-12-20 | 2024-01-04 |  | 0d |  |  |  | 136h | 3,938.94 |
| 35 | 4.3.1 | Codificación de las clases | 32h | 2023-12-20 | 2023-12-26 | 33 | 1.75d | 0d |  | Francisco Delgado; Vicente Ruiz | 72h | 2,072.79 |
| 36 | 4.3.2 | Integración del Sistema | 14h | 2023-12-27 | 2023-12-28 | 35 | 1.75d |  |  | Francisco Delgado; Vicente Ruiz | 28h | 804.71 |
| 37 | 4.3.3 | Aprobación del Sistema | 16h | 2024-01-02 | 2024-01-04 | 36 | 0d |  | start no earlier than 2024-01-02 | Juan Pérez; Francisco Delgado; Vicente Ruiz; Sara Carbonero | 36h | 1,061.43 |
| 38 | 4.4 | **Pruebas** | 3.62d | 2024-01-05 | 2024-01-10 |  | 0d |  |  |  | 64h | 1,841.99 |
| 39 | 4.4.1 | Ejecución Pruebas Unitarias | 16h | 2024-01-05 | 2024-01-08 | 37 | 0d |  | start no earlier than 2024-01-05 | Francisco Delgado; Vicente Ruiz | 38h | 1,094.76 |
| 40 | 4.4.2 | Ejecución de las Pruebas de Integración | 13h | 2024-01-09 | 2024-01-10 | 39 | 0d |  |  | Vicente Ruiz; Francisco Delgado | 26h | 747.23 |
| 41 | 5 | **Instalación del Software y Prueba del Sistema** | 2d | 2024-01-10 | 2024-01-12 |  | 0d |  |  |  | 56h | 1,556.47 |
| 42 | 5.1 | Instalación y configuración APP EPSSOFT | 8h | 2024-01-10 | 2024-01-11 | 40 | 0d |  |  | Juan Pérez; Sara Carbonero; Francisco Delgado | 26h | 719.31 |
| 43 | 5.2 | Prueba Global del Sistema | 8h | 2024-01-11 | 2024-01-12 | 42 | 0d |  |  | Sara Carbonero; Juan Pérez; Francisco Delgado | 30h | 837.15 |
| 44 | 6 | **Reunión** | 27.75d | 2023-11-20 | 2024-01-02 |  | 7.87d |  |  |  | 56h | 3,016.16 |
| 46 | 6.1 | Reunión 2 | 6h | 2023-12-04 | 2023-12-04 |  | 24.87d |  | start no earlier than 2023-12-04 | Javier Gutierrez; Juan Pérez; Francisco Delgado; Sara Carbonero; Vicente Ruiz | 14h | 754.21 |
| 47 | 6.2 | Reunión 3 | 6h | 2023-12-18 | 2023-12-18 |  | 16.87d |  | start no earlier than 2023-12-18 | Javier Gutierrez; Juan Pérez; Francisco Delgado; Sara Carbonero; Vicente Ruiz | 14h | 754.21 |
| 48 | 6.3 | Reunión 4 | 6h | 2024-01-02 | 2024-01-02 |  | 7.87d |  | start no earlier than 2024-01-01 | Javier Gutierrez; Juan Pérez; Francisco Delgado; Sara Carbonero; Vicente Ruiz | 14h | 762.29 |
