# ETSISOFT - 2324

Schedule from MS Project, 2023-11-20 to 2024-01-24, costs in €.

## Calendars

- ETSISOFT2324: Mon-Fri 09:00-13:00, 15:00-19:00; Sat-Sun off. Exceptions (off unless hours are given): 2023-12-06 (Día de la Inmaculada Concepción, recurring), 2023-12-08 (Día de la Constitución, recurring), 2023-12-25 (Navidad, recurring), 2024-01-01 (Año Nuevo, recurring), 2024-01-06 (Día de la Epifanía del Señor, recurring).

## Resources

| Resource | Group | Unit | Rate | Cost per use |
| --- | --- | --- | --- | --- |
| Soporte | Materiales | Soporte | 9.5 |  |
| Ordenador Servidor | Materiales | Instalación | 3600 | 150 |
| Windows 2022 Server | Materiales | Instalación | 850 |  |
| Switch 48 puertos 10/100/1000 MHz gestionable | Materiales | Instalación | 1250 |  |
| Patch Panel 48 puertos | Materiales | instalación | 220 |  |
| Armario 24 unidades | Materiales | Instalación | 850 |  |
| Juan Pérez | Analista, Supervisor |  | 29.15 |  |
| Javier Gutierrez | Jefe de Proyecto, Analista |  | 29.15 |  |
| Sara Carbonero | Analista, Supervisor |  | 29.15 |  |
| Vicente Ruiz | Analista, Programador |  | 29.15 |  |
| Francisco Delgado | Programador, Analista |  | 22.83 |  |
| Trabajador Soporte1 | Montador Soporte |  | 35 |  |
| Trabajador Soporte2 | Montador Soporte |  | 35 |  |
| Báscula |  |  | 38 |  |
| Torno |  |  | 1580 |  |
| Barreras/Pasillos |  |  |  |  |
| Dispositivos Biometricos |  |  | 1240 |  |

## Schedule

| ID | WBS | Task | Duration | Start | Finish | Predecessors | Total slack | Free slack | Constraint | Resources | Work | Cost |
| --- | --- | --- | --- | --- | --- | --- | --- | --- | --- | --- | --- | --- |
| 1 | 1 | **Instalación de elementos de control en puestos de líneas de producción** | 27d | 2023-11-20 | 2023-12-29 |  | 16.46d |  |  |  | 180h | 20,448.49 |
| 2 | 1.1 | Montaje de los soportes metálicos donde se apoyan las básculas | 60h | 2023-11-20 | 2023-11-29 |  | 16.46d | 0d |  | Trabajador Soporte1; Trabajador Soporte2; Soporte [240 Soporte] | 120h | 6,480 |
| 3 | 1.2 | **Habilitar punto de corriente** | 7d | 2023-11-30 | 2023-12-13 |  | 20.46d |  |  |  |  | 1,250 |
| 4 | 1.2.1 | Instalar cables | 4d | 2023-11-30 | 2023-12-07 | 2FS+1ed | 20.46d | 0d |  |  |  | 700 |
| 5 | 1.2.2 | Instalar puntos de Corriente | 2d | 2023-12-07 | 2023-12-12 | 4 | 20.46d | 0d |  |  |  | 350 |
| 6 | 1.2.3 | Pruebas | 1d | 2023-12-12 | 2023-12-13 | 5 | 20.46d | 4d |  |  |  | 200 |
| 7 | 1.3 | **Habilitar punto de red** | 11d | 2023-11-30 | 2023-12-19 |  | 16.46d |  |  |  |  | 1,920 |
| 8 | 1.3.1 | Instalar canaletas | 2d | 2023-11-30 | 2023-12-04 | 2FS+1ed | 16.46d | 0d |  |  |  | 220 |
| 9 | 1.3.2 | instalar cables | 4d | 2023-12-04 | 2023-12-12 | 8 | 16.46d | 0d |  |  |  | 650 |
| 10 | 1.3.3 | Instalar tomas de red en puestos | 2d | 2023-12-12 | 2023-12-14 | 9 | 16.46d | 0d |  |  |  | 400 |
| 11 | 1.3.4 | Montaje de Armario de comunicaciones, acabado en armario, realización de pruebas y certificación de la red | 3d | 2023-12-14 | 2023-12-19 | 10 | 16.46d | 0d |  |  |  | 650 |
| 12 | 1.4 | Montaje de la báscula | 60h | 2023-12-19 | 2023-12-29 | 6, 11 | 16.46d |  | start no earlier than 2023-12-19 | Javier Gutierrez; Juan Pérez; Báscula [24000%] | 60h | 10,798.49 |
| 13 | 2 | **Instalación de tornos de acceso** | 4.5d | 2023-12-19 | 2023-12-26 |  | 19.46d |  |  |  | 32h | 9,999.41 |
| 14 | 2.1 | **Montaje de los tornos y barreras** | 1.5d | 2023-12-19 | 2023-12-20 |  | 19.96d |  |  |  | 24h | 4,861.2 |
| 15 | 2.1.1 | Montaje de Tornos | 1d | 2023-12-19 | 2023-12-20 | 6, 11, 2 | 19.96d | 0d | start no earlier than 2023-12-13 | Trabajador Soporte1; Trabajador Soporte2; Torno [200%] | 16h | 3,725.6 |
| 16 | 2.1.2 | Montaje de Barreras | 0.5d | 2023-12-20 | 2023-12-20 | 15 | 22.46d |  |  | Trabajador Soporte1; Trabajador Soporte2 | 8h | 1,135.6 |
| 17 | 2.2 | Integración de dispositivos faciales | 1d | 2023-12-21 | 2023-12-26 | 15 | 19.46d |  | start no earlier than 2023-12-21 | Sara Carbonero; Dispositivos Biometricos [400%] | 8h | 5,138.21 |
| 18 | 3 | **Instalación de infraestructura común de red yequipamiento informático** | 5.75d | 2023-12-19 | 2023-12-28 |  | 18.21d |  |  |  | 16h | 14,741.5 |
| 19 | 3.1 | Instalación Servidor | 2.5d | 2023-12-19 | 2023-12-28 | 6, 11 | 18.21d |  |  | Ordenador Servidor [1.01 Instalación]; Windows 2022 Server [1.01 Instalación]; Armario 24 unidades [1.01 Instalación]; Patch Panel 48 puertos [6 instalación]; Switch 48 puertos 10/100/1000 MHz gestionable [6 Instalación]; Javier Gutierrez | 16h | 14,741.5 |
| 20 | 4 | **Desarrollo de la aplicación informática** | 40.88d | 2023-11-20 | 2024-01-22 |  | 0d |  |  |  | 694h | 18,746.21 |
| 21 | 4.1 | **Análisis** | 14d | 2023-11-20 | 2023-12-12 |  | 0d |  |  |  | 318h | 9,191.97 |
| 22 | 4.1.1 | Definición del Sistema | 31.33h | 2023-11-20 | 2023-11-24 |  | 0.83d | 0d |  | Sara Carbonero; Juan Pérez; Francisco Delgado | 94h | 2,542.07 |
| 23 | 4.1.2 | Establecimiento de Requisitos | 21h | 2023-11-24 | 2023-11-28 | 22 | 3.46d |  | start no earlier than 2023-11-23 | Francisco Delgado; Juan Pérez | 42h | 1,091.58 |
| 24 | 4.1.3 | Análisis de Casos de Uso | 19h | 2023-11-28 | 2023-12-01 | 22 | 1.08d |  | start no earlier than 2023-11-28 | Francisco Delgado; Juan Pérez | 38h | 1,366.1 |
| 25 | 4.1.4 | Análisis de Clases | 26h | 2023-11-24 | 2023-11-29 | 22 | 2.83d |  |  | Sara Carbonero; Vicente Ruiz | 52h | 1,515.8 |
| 26 | 4.1.5 | Identificación de las Interfaces de Usuarios | 14h | 2023-11-29 | 2023-12-01 | 22 | 1.08d |  |  | Sara Carbonero; Vicente Ruiz | 28h | 810.82 |
| 27 | 4.1.6 | Análisis de la Consistencia | 18h | 2023-12-04 | 2023-12-07 | 23, 24, 25, 26 | 0d |  | start no earlier than 2023-12-04 | Sara Carbonero; Juan Pérez | 36h | 1,049.4 |
| 28 | 4.1.7 | Aprobación del Análisis | 14h | 2023-12-07 | 2023-12-12 | 27 | 0d |  | start no earlier than 2023-12-07 | Sara Carbonero; Juan Pérez | 28h | 816.2 |

| ID | WBS | Task | Duration | Start | Finish | Predecessors | Total slack | Constraint | Resources | Work | Cost |
| --- | --- | --- | --- | --- | --- | --- | --- | --- | --- | --- | --- |
| 29 | 4.2 | **Diseño** | 14d | 2023-12-12 | 2024-01-03 |  | 0d |  |  | 176h | 4,635.8 |
| 30 | 4.2.1 | Definición de la Arquitectura del Sistema | 16h | 2023-12-12 | 2023-12-14 | 28 | 0d |  | Sara Carbonero; Juan Pérez | 32h | 932.8 |
| 31 | 4.2.2 | Diseño de Clases | 48h | 2023-12-14 | 2023-12-22 | 30 | 0d | start no earlier than 2023-12-14 | Francisco Delgado; Sara Carbonero | 48h | 1,133.12 |
| 32 | 4.2.3 | Diseño de los Datos | 32h | 2023-12-19 | 2023-12-22 | 30 | 0d | start no earlier than 2023-12-19 | Juan Pérez; Vicente Ruiz | 64h | 1,762.56 |
| 33 | 4.2.4 | Verificación del Diseño | 24h | 2023-12-26 | 2024-01-03 | 31, 32 | 0d | start no earlier than 2023-12-26 | Juan Pérez; Sara Carbonero; Vicente Ruiz; Francisco Delgado | 32h | 807.32 |
| 34 | 4.3 | **Construcción** | 8.88d | 2024-01-03 | 2024-01-16 |  | 0d |  |  | 136h | 3,353.48 |
| 35 | 4.3.1 | Codificación de las clases | 36h | 2024-01-03 | 2024-01-09 | 33 | 0d |  | Francisco Delgado; Vicente Ruiz | 72h | 1,760.58 |
| 36 | 4.3.2 | Integración del Sistema | 14h | 2024-01-09 | 2024-01-11 | 35 | 0d |  | Francisco Delgado; Vicente Ruiz | 28h | 684.67 |
| 37 | 4.3.3 | Aprobación del Sistema | 18h | 2024-01-11 | 2024-01-16 | 36 | 0d | start no earlier than 2024-01-02 | Juan Pérez; Francisco Delgado; Vicente Ruiz; Sara Carbonero | 36h | 908.23 |
| 38 | 4.4 | **Pruebas** | 4d | 2024-01-16 | 2024-01-22 |  | 0d |  |  | 64h | 1,564.96 |
| 39 | 4.4.1 | Ejecución Pruebas Unitarias | 19h | 2024-01-16 | 2024-01-18 | 37 | 0d | start no earlier than 2024-01-05 | Francisco Delgado; Vicente Ruiz | 38h | 929.19 |
| 40 | 4.4.2 | Ejecución de las Pruebas de Integración | 13h | 2024-01-18 | 2024-01-22 | 39 | 0d |  | Vicente Ruiz; Francisco Delgado | 26h | 635.76 |
| 41 | 5 | **Instalación del Software y Prueba del Sistema** | 2.33d | 2024-01-22 | 2024-01-24 |  | 0d |  |  | 56h | 1,405.53 |
| 42 | 5.1 | Instalación y configuración APP EPSSOFT | 8.67h | 2024-01-22 | 2024-01-23 | 40 | 0d |  | Juan Pérez; Sara Carbonero; Francisco Delgado | 26h | 652.57 |
| 43 | 5.2 | Prueba Global del Sistema | 10h | 2024-01-23 | 2024-01-24 | 42 | 0d |  | Sara Carbonero; Juan Pérez; Francisco Delgado | 30h | 752.96 |
| 44 | 6 | **Reunión** | 27.75d | 2023-11-20 | 2024-01-02 |  | 15.71d |  |  | 56h | 2,905.73 |
| 45 | 6.1 | Reunión 1 | 6h | 2023-11-20 | 2023-11-20 |  | 42.71d | start no earlier than 2023-11-20 | Javier Gutierrez; Juan Pérez; Francisco Delgado; Sara Carbonero; Vicente Ruiz | 14h | 745.46 |
| 46 | 6.2 | Reunión 2 | 6h | 2023-12-04 | 2023-12-04 |  | 32.71d | start no earlier than 2023-12-04 | Javier Gutierrez; Juan Pérez; Francisco Delgado; Sara Carbonero; Vicente Ruiz | 14h | 737.39 |
| 47 | 6.3 | Reunión 3 | 6h | 2023-12-18 | 2023-12-18 |  | 24.71d | start no earlier than 2023-12-18 | Javier Gutierrez; Juan Pérez; Francisco Delgado; Sara Carbonero; Vicente Ruiz | 14h | 737.39 |
| 48 | 6.4 | Reunión 4 | 6h | 2024-01-02 | 2024-01-02 |  | 15.71d | start no earlier than 2024-01-01 | Javier Gutierrez; Juan Pérez; Francisco Delgado; Sara Carbonero; Vicente Ruiz | 14h | 685.49 |
